Schedule from MS Project, 2022-03-28 to 2022-08-16.
Microsoft

## Calendars

- Estándar: Mon 10:00-14:00, 17:00-19:00; Tue-Fri 10:00-14:00, 16:00-20:00; Sat-Sun off. Exceptions (off unless hours are given): 2022-04-11 to 2022-04-17 (Semana santa), 2022-04-23 (Día de Castilla y León), 2022-05-02 (Día del Trabajo), 2022-05-16 to 2022-05-31 (Periodo de exámenes), 2022-06-13 (San Juan de Sahagún), 2022-08-15 (Virgen de la Asunción).

## Resources

| Resource |
| --- |
| Alberto Macías Gutiérrez |

## Schedule

| ID | WBS | Task | Type | Duration | Start | Finish | Predecessors | Total slack | Resources | Work |
| --- | --- | --- | --- | --- | --- | --- | --- | --- | --- | --- |
| 1 | 1 | **Plataforma de análisis de datos de Instagram** |  | 78.25d | 2022-03-28 | 2022-08-16 |  | 0d |  | 610h |
| 2 | 1.1 | **Inicio** |  | 18d | 2022-03-28 | 2022-04-28 |  | 0d |  | 144h |
| 3 | 1.1.1 | **Iteración 1** |  | 18d | 2022-03-28 | 2022-04-28 |  | 0d |  | 144h |
| 4 | 1.1.1.1 | **Modelado del negocio** |  | 9d | 2022-03-28 | 2022-04-08 |  | 0d |  | 72h |
| 5 | 1.1.1.1.1 | Búsqueda de información |  | 3d | 2022-03-28 | 2022-03-31 |  | 0d | Alberto Macías Gutiérrez | 24h |
| 6 | 1.1.1.1.2 | Investigación sobre proyectos existentes |  | 2d | 2022-03-31 | 2022-04-04 | 5 | 0d | Alberto Macías Gutiérrez | 16h |
| 7 | 1.1.1.1.3 | Invetigación de tecnologías para obtener los datos |  | 4d | 2022-04-04 | 2022-04-08 | 6 | 0d | Alberto Macías Gutiérrez | 32h |
| 8 | 1.1.1.2 | **Requisitos** |  | 3d | 2022-04-08 | 2022-04-20 | 4 | 0d |  | 24h |
| 9 | 1.1.1.2.1 | Modelar requisitos |  | 3d | 2022-04-08 | 2022-04-20 |  | 0d | Alberto Macías Gutiérrez | 24h |
| 10 | 1.1.1.3 | **Análisis** |  | 6d | 2022-04-20 | 2022-04-28 | 8 | 0d |  | 48h |
| 11 | 1.1.1.3.1 | Subsistema scraping |  | 3d | 2022-04-20 | 2022-04-25 |  | 0d | Alberto Macías Gutiérrez | 24h |
| 12 | 1.1.1.3.2 | Subsistema tratar datos |  | 3d | 2022-04-26 | 2022-04-28 | 11 | 0d | Alberto Macías Gutiérrez | 24h |
| 13 | 1.1.2 | Hito iteración 1 | milestone | 0d | 2022-04-28 | 2022-04-28 | 3 | 0d |  |  |
| 14 | 1.2 | Hito inicio | milestone | 0d | 2022-04-28 | 2022-04-28 | 2 | 60.25d |  |  |
| 15 | 1.3 | **Elaboración** |  | 27.75d | 2022-04-29 | 2022-06-28 | 2 | 0d |  | 206h |
| 16 | 1.3.1 | **Iteración 1** |  | 16.5d | 2022-04-29 | 2022-06-09 |  | 0d |  | 132h |
| 17 | 1.3.1.1 | **Modelado del negocio** |  | 4d | 2022-04-29 | 2022-05-05 |  | 0d |  | 32h |
| 18 | 1.3.1.1.1 | Investigación datos scraping |  | 4d | 2022-04-29 | 2022-05-05 |  | 0d | Alberto Macías Gutiérrez | 32h |
| 19 | 1.3.1.2 | **Requisitos** |  | 2d | 2022-05-06 | 2022-05-10 | 17 | 0d |  | 16h |
| 20 | 1.3.1.2.1 | Refinamiento requisitos subsistema Scraping |  | 1d | 2022-05-06 | 2022-05-06 |  | 0d | Alberto Macías Gutiérrez | 8h |
| 21 | 1.3.1.2.2 | Refinamiento requisitos subsistema tratar datos |  | 1d | 2022-05-09 | 2022-05-10 | 20 | 0d | Alberto Macías Gutiérrez | 8h |
| 22 | 1.3.1.3 | **Análisis** |  | 4d | 2022-05-10 | 2022-06-01 | 19 | 0d |  | 32h |
| 23 | 1.3.1.3.1 | Refinamiento subsistema scraping |  | 1d | 2022-05-10 | 2022-05-11 |  | 0d | Alberto Macías Gutiérrez | 8h |
| 24 | 1.3.1.3.2 | Refinamiento subsistema tratar datos |  | 1d | 2022-05-11 | 2022-05-12 | 23 | 0d | Alberto Macías Gutiérrez | 8h |
| 25 | 1.3.1.3.3 | Subsistema usuarios |  | 2d | 2022-05-12 | 2022-06-01 | 24 | 0d | Alberto Macías Gutiérrez | 16h |

| ID | WBS | Task | Type | Duration | Start | Finish | Predecessors | Total slack | Resources | Work |
| --- | --- | --- | --- | --- | --- | --- | --- | --- | --- | --- |
| 26 | 1.3.1.4 | **Diseño** |  | 3d | 2022-06-01 | 2022-06-06 | 22 | 0d |  | 24h |
| 27 | 1.3.1.4.1 | Diseño subsistema scraping |  | 1d | 2022-06-01 | 2022-06-02 |  | 0d | Alberto Macías Gutiérrez | 8h |
| 28 | 1.3.1.4.2 | Diseño subsistema tratar datos |  | 1d | 2022-06-02 | 2022-06-03 | 27 | 0d | Alberto Macías Gutiérrez | 8h |
| 29 | 1.3.1.4.3 | Diseño susbsistema usuarios |  | 1d | 2022-06-03 | 2022-06-06 | 28 | 0d | Alberto Macías Gutiérrez | 8h |
| 30 | 1.3.1.5 | **Implementación** |  | 3.5d | 2022-06-06 | 2022-06-09 | 26 | 0d |  | 28h |
| 31 | 1.3.1.5.1 | Implementación subsistema scraping |  | 1.5d | 2022-06-06 | 2022-06-07 |  | 0d | Alberto Macías Gutiérrez | 12h |
| 32 | 1.3.1.5.2 | Implementación subsistema tratar datos |  | 1d | 2022-06-08 | 2022-06-08 | 31 | 0d | Alberto Macías Gutiérrez | 8h |
| 33 | 1.3.1.5.3 | Implementación subsistema usuarios en framework |  | 1d | 2022-06-09 | 2022-06-09 | 32 | 0d | Alberto Macías Gutiérrez | 8h |
| 34 | 1.3.2 | Hito iteración 1 | milestone | 0d | 2022-06-09 | 2022-06-09 | 16 | 11.25d |  |  |
| 35 | 1.3.3 | **Iteración 2** |  | 11.25d | 2022-06-10 | 2022-06-28 | 16 | 0d |  | 74h |
| 36 | 1.3.3.1 | **Modelado del negocio** |  | 2d | 2022-06-10 | 2022-06-14 |  | 0d |  |  |
| 37 | 1.3.3.1.1 | Investigación datos scraping |  | 2d | 2022-06-10 | 2022-06-14 |  | 0d |  |  |
| 38 | 1.3.3.2 | **Requisitos** |  | 1.25d | 2022-06-15 | 2022-06-16 | 36 | 0d |  | 10h |
| 39 | 1.3.3.2.1 | Refinamiento requisitos subsistema scraping |  | 0.5d | 2022-06-15 | 2022-06-15 |  | 0d | Alberto Macías Gutiérrez | 4h |
| 40 | 1.3.3.2.2 | Refinamiento requisitos subsistema tratar datos |  | 0.25d | 2022-06-15 | 2022-06-15 | 39 | 0d | Alberto Macías Gutiérrez | 2h |
| 41 | 1.3.3.2.3 | Subsistema usuarios |  | 0.5d | 2022-06-15 | 2022-06-16 | 40 | 0d | Alberto Macías Gutiérrez | 4h |
| 42 | 1.3.3.3 | **Análisis** |  | 1.5d | 2022-06-16 | 2022-06-17 | 38 | 0d |  | 12h |
| 43 | 1.3.3.3.1 | Refinamiento subsistema scraping |  | 0.5d | 2022-06-16 | 2022-06-16 |  | 0d | Alberto Macías Gutiérrez | 4h |
| 44 | 1.3.3.3.2 | Refinamiento subsistema tratar datos |  | 0.5d | 2022-06-16 | 2022-06-17 | 43 | 0d | Alberto Macías Gutiérrez | 4h |
| 45 | 1.3.3.3.3 | Refinamiento susbsistema usuarios |  | 0.5d | 2022-06-17 | 2022-06-17 | 44 | 0d | Alberto Macías Gutiérrez | 4h |
| 46 | 1.3.3.4 | **Diseño** |  | 3d | 2022-06-17 | 2022-06-22 | 42 | 0d |  | 24h |
| 47 | 1.3.3.4.1 | Refinamiento subsistema scraping |  | 1d | 2022-06-17 | 2022-06-20 |  | 0d | Alberto Macías Gutiérrez | 8h |
| 48 | 1.3.3.4.2 | Refinamiento subsistema tratar datos |  | 1d | 2022-06-21 | 2022-06-21 | 47 | 0d | Alberto Macías Gutiérrez | 8h |
| 49 | 1.3.3.4.3 | Refinamiento subsistema usuarios |  | 1d | 2022-06-22 | 2022-06-22 | 48 | 0d | Alberto Macías Gutiérrez | 8h |

| ID | WBS | Task | Type | Duration | Start | Finish | Predecessors | Total slack | Resources | Work |
| --- | --- | --- | --- | --- | --- | --- | --- | --- | --- | --- |
| 50 | 1.3.3.5 | **Implementación** |  | 2.5d | 2022-06-23 | 2022-06-27 | 46 | 0d |  | 20h |
| 51 | 1.3.3.5.1 | Implementación susbsistema scraping en framework |  | 1d | 2022-06-23 | 2022-06-23 |  | 0d | Alberto Macías Gutiérrez | 8h |
| 52 | 1.3.3.5.2 | Implementación subsistema tratar datos en framework |  | 1d | 2022-06-24 | 2022-06-24 | 51 | 0d | Alberto Macías Gutiérrez | 8h |
| 53 | 1.3.3.5.3 | Refinamiento susbsistema tratar datos en framework |  | 0.5d | 2022-06-27 | 2022-06-27 | 52 | 0d | Alberto Macías Gutiérrez | 4h |
| 54 | 1.3.3.6 | **Pruebas** |  | 1d | 2022-06-27 | 2022-06-28 | 50 | 0d |  | 8h |
| 55 | 1.3.3.6.1 | Pruebas de susbsistemas en framework |  | 1d | 2022-06-27 | 2022-06-28 |  | 0d | Alberto Macías Gutiérrez | 8h |
| 56 | 1.3.4 | Hito iteración 2 | milestone | 0d | 2022-06-28 | 2022-06-28 | 35 | 0d | Alberto Macías Gutiérrez |  |
| 57 | 1.4 | Hito elaboración | milestone | 0d | 2022-06-28 | 2022-06-28 | 15 | 32.5d | Alberto Macías Gutiérrez |  |
| 58 | 1.5 | **Construcción** |  | 25d | 2022-06-28 | 2022-08-03 | 15 | 0d |  | 200h |
| 59 | 1.5.1 | **Iteración 1** |  | 14d | 2022-06-28 | 2022-07-19 |  | 0d |  | 112h |
| 60 | 1.5.1.1 | **Modelado de negocio** |  | 1d | 2022-06-28 | 2022-06-29 |  | 0d |  | 8h |
| 61 | 1.5.1.1.1 | Investigación datos scraping |  | 1d | 2022-06-28 | 2022-06-29 |  | 0d | Alberto Macías Gutiérrez | 8h |
| 62 | 1.5.1.2 | **Requisitos** |  | 1d | 2022-06-29 | 2022-06-30 | 60 | 0d |  | 8h |
| 63 | 1.5.1.2.1 | Refinamiento requisitos subsistema scraping |  | 0.5d | 2022-06-29 | 2022-06-30 |  | 0d | Alberto Macías Gutiérrez | 4h |
| 64 | 1.5.1.2.2 | Refinamiento requisitos subsistema tratar datos |  | 0.25d | 2022-06-30 | 2022-06-30 | 63 | 0d | Alberto Macías Gutiérrez | 2h |
| 65 | 1.5.1.2.3 | Refinamiento requisitos subsistema usuarios |  | 0.25d | 2022-06-30 | 2022-06-30 | 64 | 0d | Alberto Macías Gutiérrez | 2h |
| 66 | 1.5.1.3 | **Análisis** |  | 1d | 2022-06-30 | 2022-07-01 | 62 | 0d |  | 8h |
| 67 | 1.5.1.3.1 | Refinamiento subsistema scraping |  | 0.5d | 2022-06-30 | 2022-07-01 |  | 0d | Alberto Macías Gutiérrez | 4h |
| 68 | 1.5.1.3.2 | Refinamiento subsistema tratar datos |  | 0.25d | 2022-07-01 | 2022-07-01 | 67 | 0d | Alberto Macías Gutiérrez | 2h |
| 69 | 1.5.1.3.3 | Refinamiento subsistema usuarios |  | 0.25d | 2022-07-01 | 2022-07-01 | 68 | 0d | Alberto Macías Gutiérrez | 2h |
| 70 | 1.5.1.4 | **Diseño** |  | 2d | 2022-07-01 | 2022-07-05 | 66 | 0d |  | 16h |
| 71 | 1.5.1.4.1 | Diseño subsistema visualización resultados |  | 2d | 2022-07-01 | 2022-07-05 |  | 0d | Alberto Macías Gutiérrez | 16h |
| 72 | 1.5.1.5 | **Implementación** |  | 8d | 2022-07-06 | 2022-07-18 | 70 | 0d |  | 64h |
| 73 | 1.5.1.5.1 | Implementación susbsistema visualización resultados en framerork |  | 5d | 2022-07-06 | 2022-07-13 |  | 0d | Alberto Macías Gutiérrez | 40h |
| 74 | 1.5.1.5.2 | Refinamiento subsistema de tratar datos en framework |  | 1d | 2022-07-13 | 2022-07-14 | 73 | 0d | Alberto Macías Gutiérrez | 8h |
| 75 | 1.5.1.5.3 | Refinamiento subsistema de usuarios en framework |  | 1d | 2022-07-14 | 2022-07-15 | 74 | 0d | Alberto Macías Gutiérrez | 8h |
| 76 | 1.5.1.5.4 | Refinamiento subsistema de scraping en framework |  | 1d | 2022-07-15 | 2022-07-18 | 75 | 0d | Alberto Macías Gutiérrez | 8h |

| ID | WBS | Task | Type | Duration | Start | Finish | Predecessors | Total slack | Resources | Work |
| --- | --- | --- | --- | --- | --- | --- | --- | --- | --- | --- |
| 77 | 1.5.1.6 | **Pruebas** |  | 1d | 2022-07-18 | 2022-07-19 | 72 | 0d |  | 8h |
| 78 | 1.5.1.6.1 | Pruebas subsistemas framework |  | 1d | 2022-07-18 | 2022-07-19 |  | 0d | Alberto Macías Gutiérrez | 8h |
| 79 | 1.5.2 | Hito iteración 1 | milestone | 0d | 2022-07-19 | 2022-07-19 | 59 | 11d |  |  |
| 80 | 1.5.3 | **Iteración 2** |  | 11d | 2022-07-19 | 2022-08-03 | 59 | 0d |  | 88h |
| 81 | 1.5.3.1 | **Requisitos** |  | 1d | 2022-07-19 | 2022-07-20 |  | 0d |  | 8h |
| 82 | 1.5.3.1.1 | Refinamiento requisitos subsistema scraping |  | 0.5d | 2022-07-19 | 2022-07-19 |  | 0d | Alberto Macías Gutiérrez | 4h |
| 83 | 1.5.3.1.2 | Refinamiento requisitos subsistema tratar datos |  | 0.25d | 2022-07-20 | 2022-07-20 | 82 | 0d | Alberto Macías Gutiérrez | 2h |
| 84 | 1.5.3.1.3 | Refinamiento requisitos subsistema usuarios |  | 0.25d | 2022-07-20 | 2022-07-20 | 83 | 0d | Alberto Macías Gutiérrez | 2h |
| 85 | 1.5.3.2 | **Análisis** |  | 1d | 2022-07-20 | 2022-07-21 | 81 | 0d |  | 8h |
| 86 | 1.5.3.2.1 | Refinamiento subsistema scraping |  | 0.5d | 2022-07-20 | 2022-07-20 |  | 0d | Alberto Macías Gutiérrez | 4h |
| 87 | 1.5.3.2.2 | Refinamiento subsistema tratar datos |  | 0.25d | 2022-07-21 | 2022-07-21 | 86 | 0d | Alberto Macías Gutiérrez | 2h |
| 88 | 1.5.3.2.3 | Refinamiento subsistema usuarios |  | 0.25d | 2022-07-21 | 2022-07-21 | 87 | 0d | Alberto Macías Gutiérrez | 2h |
| 89 | 1.5.3.3 | **Diseño** |  | 1d | 2022-07-21 | 2022-07-22 | 85 | 0d |  | 8h |
| 90 | 1.5.3.3.1 | Refinamiento subsistema visualización resultados |  | 1d | 2022-07-21 | 2022-07-22 |  | 0d | Alberto Macías Gutiérrez | 8h |
| 91 | 1.5.3.4 | **Implementación** |  | 6d | 2022-07-22 | 2022-08-01 | 89 | 0d |  | 48h |
| 92 | 1.5.3.4.1 | Refinamiento susbsistema visualización resultados |  | 3d | 2022-07-22 | 2022-07-27 |  | 0d | Alberto Macías Gutiérrez | 24h |
| 93 | 1.5.3.4.2 | Refinamiento subsistema de tratar datos en framework |  | 1d | 2022-07-27 | 2022-07-28 | 92 | 0d | Alberto Macías Gutiérrez | 8h |
| 94 | 1.5.3.4.3 | Refinamiento subsistema de usuarios en framework |  | 1d | 2022-07-28 | 2022-07-29 | 93 | 0d | Alberto Macías Gutiérrez | 8h |
| 95 | 1.5.3.4.4 | Refinamiento subsistema de scraping en framework |  | 1d | 2022-07-29 | 2022-08-01 | 94 | 0d | Alberto Macías Gutiérrez | 8h |
| 96 | 1.5.3.5 | **Pruebas** |  | 2d | 2022-08-02 | 2022-08-03 | 91 | 0d |  | 16h |
| 97 | 1.5.3.5.1 | Pruebas subsistemas framework |  | 2d | 2022-08-02 | 2022-08-03 |  | 0d | Alberto Macías Gutiérrez | 16h |
| 98 | 1.5.4 | Hito iteración 2 | milestone | 0d | 2022-08-03 | 2022-08-03 | 80 | 0d |  |  |
| 99 | 1.6 | Hito construcción | milestone | 0d | 2022-08-03 | 2022-08-03 | 58 | 7.5d |  |  |
| 100 | 1.7 | **Transición** |  | 7.5d | 2022-08-04 | 2022-08-16 | 58 | 0d |  | 60h |
| 101 | 1.7.1 | **Iteración 1** |  | 7.5d | 2022-08-04 | 2022-08-16 |  | 0d |  | 60h |
| 102 | 1.7.1.1 | **Requisitos** |  | 1d | 2022-08-04 | 2022-08-04 |  | 0d |  | 8h |
| 103 | 1.7.1.1.1 | Refinamiento requisitos subsistema scraping |  | 0.5d | 2022-08-04 | 2022-08-04 |  | 0d | Alberto Macías Gutiérrez | 4h |
| 104 | 1.7.1.1.2 | Refinamiento requisitos subsistema tratar datos |  | 0.25d | 2022-08-04 | 2022-08-04 | 103 | 0d | Alberto Macías Gutiérrez | 2h |
| 105 | 1.7.1.1.3 | Refinamiento requisitos subsistema usuarios |  | 0.25d | 2022-08-04 | 2022-08-04 | 104 | 0d | Alberto Macías Gutiérrez | 2h |

| ID | WBS | Task | Type | Duration | Start | Finish | Predecessors | Total slack | Resources | Work |
| --- | --- | --- | --- | --- | --- | --- | --- | --- | --- | --- |
| 106 | 1.7.1.2 | **Implementación** |  | 3.5d | 2022-08-05 | 2022-08-10 | 102 | 0d |  | 28h |
| 107 | 1.7.1.2.1 | Refinamiento susbsistema visualización resultados en framework |  | 2d | 2022-08-05 | 2022-08-09 |  | 0d | Alberto Macías Gutiérrez | 16h |
| 108 | 1.7.1.2.2 | Refinamiento subsistema de tratar datos en framework |  | 0.5d | 2022-08-09 | 2022-08-09 | 107 | 0d | Alberto Macías Gutiérrez | 4h |
| 109 | 1.7.1.2.3 | Refinamiento subsistema de usuarios en framework |  | 0.5d | 2022-08-09 | 2022-08-10 | 108 | 0d | Alberto Macías Gutiérrez | 4h |
| 110 | 1.7.1.2.4 | Refinamiento subsistema de scraping en framework |  | 0.5d | 2022-08-10 | 2022-08-10 | 109 | 0d | Alberto Macías Gutiérrez | 4h |
| 111 | 1.7.1.3 | **Pruebas** |  | 3d | 2022-08-10 | 2022-08-16 | 106 | 0d |  | 24h |
| 112 | 1.7.1.3.1 | Pruebas subsistemas framework |  | 2d | 2022-08-10 | 2022-08-12 |  | 0d | Alberto Macías Gutiérrez | 16h |
| 113 | 1.7.1.3.2 | Pruebas de integración |  | 1d | 2022-08-12 | 2022-08-16 | 112 | 0d | Alberto Macías Gutiérrez | 8h |
| 114 | 1.7.2 | Hito iteración 1 | milestone | 0d | 2022-08-16 | 2022-08-16 | 101 | 0d |  |  |
| 115 | 1.8 | Hito transición | milestone | 0d | 2022-08-16 | 2022-08-16 | 100 | 0d |  |  |
